# Assignment2_Plan1

Schedule from MS Project, 2021-03-08 to 2021-08-12.

## Calendars

- Standard: Mon-Fri 08:00-12:00, 13:00-17:00; Sat-Sun off.

## Resources

| Resource |
| --- |
| Project Manager4 |
| Requirement engineer28 |
| Requirement engineer29 |
| Requirement engineer32 |
| System engineer7 |
| System engineer30 |
| System engineer31 |
| System engineer32 |
| System engineer35 |
| Programmer7 |
| Programmer12 |
| Programmer13 |
| Programmer22 |
| Programmer23 |
| Programmer24 |
| Programmer25 |
| Programmer26 |
| Programmer27 |
| Programmer28 |
| Programmer29 |
| Programmer58 |
| Programmer59 |
| Programmer65 |
| Programmer66 |
| Test Engineer71 |
| Test Engineer72 |
| Test Engineer73 |
| Test Engineer74 |
| Document Engineer43 |
| Document Engineer44 |
| Document Engineer45 |
| Document Engineer81 |
| Document Engineer82 |
| Document Engineer84 |
| Document Engineer85 |
| Document Engineer91 |

## Schedule

| ID | WBS | Task | Duration | Start | Finish | Predecessors | Total slack | Free slack | Constraint | Resources | Work |
| --- | --- | --- | --- | --- | --- | --- | --- | --- | --- | --- | --- |
| 1 | 1 | **Assignment2_Project_Plan1** | 113.8d | 2021-03-08 | 2021-08-12 |  | 0d |  |  |  | 5237.44h |
| 2 | 1.1 | **Project Plan** | 9.05d | 2021-03-08 | 2021-03-19 |  | 0d |  |  |  | 219.76h |
| 3 | 1.1.1 | Write Plan | 2.83d | 2021-03-08 | 2021-03-10 |  | 0d |  | start no earlier than 2021-03-08 | Project Manager4 | 22.64h |
| 4 | 1.1.2 | **Review Plan** | 4.25d | 2021-03-10 | 2021-03-17 | 3 | 0d |  |  |  | 181.36h |
| 5 | 1.1.2.1 | Preparation for review | 2.83d | 2021-03-10 | 2021-03-15 | 3 | 0d |  |  | Document Engineer81; Programmer58; Requirement engineer28; System engineer30; Test Engineer71 | 113.2h |
| 6 | 1.1.2.2 | Review meeting | 1.42d | 2021-03-15 | 2021-03-17 | 5 | 0d |  |  | Document Engineer81; Programmer58; Requirement engineer28; System engineer30; Test Engineer71; Project Manager4 | 68.16h |
| 7 | 1.1.3 | Rework | 1.97d | 2021-03-17 | 2021-03-19 | 6 | 0d |  |  | Project Manager4 | 15.76h |
| 8 | 1.2 | **Requirement** | 12.26d | 2021-03-19 | 2021-04-06 | 7 | 0d |  |  |  | 391.44h |
| 9 | 1.2.1 | Write requirement | 2.03d | 2021-03-19 | 2021-03-23 | 7 | 0d |  |  | Requirement engineer28; Requirement engineer29; Requirement engineer32 | 48.64h |
| 10 | 1.2.2 | **Review Requirements** | 9.12d | 2021-03-23 | 2021-04-05 | 9 | 0d |  |  |  | 316.16h |
| 11 | 1.2.2.1 | Preparation for review | 6.08d | 2021-03-23 | 2021-03-31 | 9 | 0d |  |  | Document Engineer81; Programmer58; System engineer30; Test Engineer71 | 194.56h |
| 12 | 1.2.2.2 | review meeting | 3.04d | 2021-03-31 | 2021-04-05 | 11 | 0d |  |  | Document Engineer81; Programmer58; System engineer30; Test Engineer71; Requirement engineer28 | 121.6h |
| 13 | 1.2.3 | Rework | 1.11d | 2021-04-05 | 2021-04-06 | 12 | 0d |  |  | Requirement engineer28; Requirement engineer29; Requirement engineer32 | 26.64h |
| 14 | 1.3 | **Lab and Environment Setup** | 8.24d | 2021-04-06 | 2021-04-16 | 13 | 84.25d |  |  |  | 228.4h |
| 15 | 1.3.1 | **Hardware** | 4.83d | 2021-04-06 | 2021-04-13 | 13 | 84.25d |  |  |  | 146.4h |
| 16 | 1.3.1.1 | **Install Network Elements** | 1d | 2021-04-06 | 2021-04-07 | 13 | 84.25d |  |  |  | 24h |
| 17 | 1.3.1.1.1 | Routers | 0.5d | 2021-04-06 | 2021-04-06 | 13 | 389.89d | 0d |  | System engineer30; System engineer31 | 8h |
| 18 | 1.3.1.1.2 | Bridge | 0.5d | 2021-04-06 | 2021-04-07 | 17 | 389.89d | 0d |  | System engineer30; System engineer31; System engineer32; System engineer35 | 16h |
| 19 | 1.3.1.2 | Install Server | 2d | 2021-04-07 | 2021-04-09 | 18 | 389.89d | 0d |  | System engineer30; System engineer31; System engineer32; System engineer35 | 64h |
| 20 | 1.3.1.3 | Install Clients | 1.82d | 2021-04-09 | 2021-04-13 | 19 | 389.89d | 0d |  | System engineer30; System engineer31; System engineer32; System engineer35 | 58.4h |
| 21 | 1.3.2 | **Software** | 3.42d | 2021-04-13 | 2021-04-16 | 20 | 84.25d |  |  |  | 82h |
| 22 | 1.3.2.1 | Install Development Tools | 1.92d | 2021-04-13 | 2021-04-15 | 20 | 389.89d | 0d |  | System engineer31; System engineer32; System engineer35 | 46h |
| 23 | 1.3.2.2 | Install Testing Tools | 1.5d | 2021-04-15 | 2021-04-16 | 22 | 389.89d |  |  | System engineer31; System engineer32; System engineer35 | 36h |
| 24 | 1.4 | **Analysis/Design Document** | 13.2d | 2021-04-06 | 2021-04-23 | 13 | 0d |  |  |  | 465.2h |
| 25 | 1.4.1 | Write DD | 2.65d | 2021-04-06 | 2021-04-08 | 13 | 0d |  |  | Document Engineer81; Document Engineer82; Document Engineer84; Document Engineer85; Document Engineer91 | 106h |

| ID | WBS | Task | Duration | Start | Finish | Predecessors | Total slack | Free slack | Resources | Work |
| --- | --- | --- | --- | --- | --- | --- | --- | --- | --- | --- |
| 26 | 1.4.2 | **Review DD** | 7.95d | 2021-04-08 | 2021-04-20 | 25 | 0d |  |  | 296.8h |
| 27 | 1.4.2.1 | Preparation for DD | 5.3d | 2021-04-08 | 2021-04-16 | 25 | 0d |  | Programmer58; Requirement engineer28; Test Engineer71; System engineer7 | 169.6h |
| 28 | 1.4.2.2 | Review meeting | 2.65d | 2021-04-16 | 2021-04-20 | 27 | 0d |  | Document Engineer81; Document Engineer82; Programmer58; Requirement engineer28; System engineer30; Test Engineer71 | 127.2h |
| 29 | 1.4.3 | Rework | 2.6d | 2021-04-20 | 2021-04-23 | 28 | 0d |  | Document Engineer84; Document Engineer85; Document Engineer91 | 62.4h |
| 30 | 1.5 | **Data Model** | 6.64d | 2021-04-23 | 2021-05-04 | 29 | 72.65d |  |  | 190.56h |
| 31 | 1.5.1 | Create Data Model | 2.58d | 2021-04-23 | 2021-04-28 | 29 | 72.65d | 0d | System engineer31; System engineer32; System engineer35 | 62h |
| 32 | 1.5.2 | **Review Data Model** | 2.33d | 2021-04-28 | 2021-04-30 | 31 | 72.65d |  |  | 87.04h |
| 33 | 1.5.2.1 | Preparation for DM | 1.55d | 2021-04-28 | 2021-04-29 | 31 | 72.65d | 0d | Document Engineer81; Programmer58; Requirement engineer28; Test Engineer71 | 49.6h |
| 34 | 1.5.2.2 | Review meeting | 0.78d | 2021-04-29 | 2021-04-30 | 33 | 72.65d | 0d | Document Engineer81; Programmer58; Requirement engineer28; Test Engineer71; System engineer32; System engineer35 | 37.44h |
| 35 | 1.5.3 | Rework | 1.73d | 2021-04-30 | 2021-05-04 | 34 | 72.65d |  | System engineer31; System engineer32; System engineer35 | 41.52h |
| 36 | 1.6 | **Coding and unit test** | 41.59d | 2021-04-23 | 2021-06-22 | 29 | 0d |  |  | 2514.8h |
| 37 | 1.6.1 | Write Code | 11.29d | 2021-04-23 | 2021-05-10 | 29 | 0d |  | Programmer59; Programmer65; Programmer66; Programmer7; Programmer12; Programmer13; Programmer22; Programmer23; Programmer24; Programmer25; Programmer26; Programmer27; Programmer28; Programmer29 | 1264.64h |
| 38 | 1.6.2 | **Unit Testing** | 17.86d | 2021-05-10 | 2021-06-03 | 37 | 0d |  |  | 725.44h |
| 39 | 1.6.2.1 | Prepare/Execute test Cases | 4.81d | 2021-05-10 | 2021-05-17 | 37 | 0d |  | Programmer58; Programmer59; Programmer65; Programmer66; Programmer26; Programmer27; Programmer28; Programmer29 | 307.68h |
| 40 | 1.6.2.2 | Fix Found Defects | 9.04d | 2021-05-17 | 2021-05-28 | 39 | 0d |  | Programmer58; Programmer59; Programmer65; Programmer66 | 289.2h |
| 41 | 1.6.2.3 | Test Fixed Defects | 4.02d | 2021-05-28 | 2021-06-03 | 40 | 0d |  | Programmer58; Programmer59; Programmer65; Programmer66 | 128.56h |
| 42 | 1.6.3 | **Code Inspection** | 12.44d | 2021-06-03 | 2021-06-22 | 41 | 0d |  |  | 524.72h |
| 43 | 1.6.3.1 | Preparation for Code Inspection | 5.27d | 2021-06-03 | 2021-06-10 | 41 | 0d |  | Document Engineer81; Requirement engineer28; System engineer30; Test Engineer71 | 168.64h |
| 44 | 1.6.3.2 | Code Inspection Meeting | 3.96d | 2021-06-10 | 2021-06-16 | 43 | 0d |  | Document Engineer81; Requirement engineer28; System engineer30; Test Engineer71; Programmer58; Programmer59; Programmer65; Programmer66 | 253.44h |
| 45 | 1.6.3.3 | Rework | 3.21d | 2021-06-16 | 2021-06-22 | 44 | 0d |  | Programmer58; Programmer59; Programmer65; Programmer66 | 102.64h |
| 46 | 1.7 | **Testing** | 37.7d | 2021-06-22 | 2021-08-12 | 13, 45 | 0d |  |  | 1184.64h |
| 47 | 1.7.1 | Write test Plan (TP) | 7.83d | 2021-06-22 | 2021-07-01 | 13 | 0d |  | Test Engineer71; Test Engineer72; Test Engineer73; Test Engineer74 | 250.4h |
| 48 | 1.7.2 | **Review TP** | 15.08d | 2021-07-01 | 2021-07-23 | 47 | 0d |  |  | 460.64h |
| 49 | 1.7.2.1 | Preparation for TP | 7.83d | 2021-07-01 | 2021-07-13 | 47 | 0d |  | Document Engineer81; Programmer58; Requirement engineer28; System engineer30 | 250.56h |
| 50 | 1.7.2.2 | Review TP meeting | 3.92d | 2021-07-13 | 2021-07-19 | 49 | 0d |  | Document Engineer81; Programmer58; Requirement engineer28; System engineer30; Test Engineer71 | 156.8h |
| 51 | 1.7.2.3 | Rework | 3.33d | 2021-07-19 | 2021-07-23 | 50 | 0d |  | Test Engineer71; Test Engineer72 | 53.28h |
| 52 | 1.7.3 | Execute TP(test cases) | 8.9d | 2021-07-23 | 2021-08-04 | 45, 51 | 0d |  | Test Engineer71; Test Engineer72; Test Engineer73; Test Engineer74 | 284.8h |
| 53 | 1.7.4 | Fix Found Defects | 5.9d | 2021-08-04 | 2021-08-12 | 52 | 0d |  | Programmer58; Programmer59; Programmer65; Programmer66 | 188.8h |

| ID | WBS | Task | Duration | Start | Finish | Predecessors | Total slack | Free slack | Resources | Work |
| --- | --- | --- | --- | --- | --- | --- | --- | --- | --- | --- |
| 54 | 1.8 | **Documentation** | 13.06d | 2021-04-06 | 2021-04-23 | 13 | 65.36d |  |  | 42.64h |
| 55 | 1.8.1 | User Documentation | 1.07d | 2021-04-06 | 2021-04-07 | 13 | 65.36d | 0d | Document Engineer81; Document Engineer82; Document Engineer44; Document Engineer45; Document Engineer43 | 42.64h |
| 56 | 1.8.2 | **Review UD** | 11.99d | 2021-04-07 | 2021-04-23 | 55 | 65.36d |  |  |  |
| 57 | 1.8.2.1 | Preparation for UD Review meeting | 5.33d | 2021-04-07 | 2021-04-14 | 55 | 65.36d | 0d |  |  |
| 58 | 1.8.2.2 | Review UD Meeting | 3.33d | 2021-04-14 | 2021-04-20 | 57 | 65.36d | 0d |  |  |
| 59 | 1.8.2.3 | Rework | 3.33d | 2021-04-20 | 2021-04-23 | 58 | 65.36d | 0d |  |  |
| 60 | 1.9 | **Training** | 14.08d | 2021-04-23 | 2021-05-13 | 59 | 65.36d |  |  |  |
| 61 | 1.9.1 | Training Handouts(TH) | 9d | 2021-04-23 | 2021-05-06 | 59 | 65.36d | 0d |  |  |
| 62 | 1.9.2 | **Review Training Handouts(TH)** | 5.08d | 2021-05-06 | 2021-05-13 | 61 | 65.36d |  |  |  |
| 63 | 1.9.2.1 | Preparation for TH review meeting | 1.13d | 2021-05-06 | 2021-05-07 | 61 | 65.36d | 0d |  |  |
| 64 | 1.9.2.2 | Review TH Meeting | 0.9d | 2021-05-07 | 2021-05-10 | 63 | 65.36d | 0d |  |  |
| 65 | 1.9.2.3 | Rework | 3.05d | 2021-05-10 | 2021-05-13 | 64 | 65.36d |  |  |  |
