# Assignment#3

Schedule from MS Project, 2021-03-22 to 2022-09-07.

## Calendars

- Standard: Mon-Fri 08:00-12:00, 13:00-17:00; Sat-Sun off.

## Resources

| Resource |
| --- |
| Project Manager2 |
| Project Manager3 |
| Requirement engineer7 |
| Requirement engineer8 |
| Requirement engineer9 |
| Requirement engineer10 |
| Requirement engineer13 |
| Requirement engineer14 |
| Requirement engineer15 |
| System engineer7 |
| System engineer8 |
| System engineer9 |
| System engineer11 |
| System engineer12 |
| System engineer13 |
| System engineer14 |
| System engineer15 |
| System engineer16 |
| Programmer7 |
| Programmer8 |
| Programmer12 |
| Programmer13 |
| Programmer22 |
| Programmer23 |
| Programmer24 |
| Programmer25 |
| Programmer26 |
| Programmer27 |
| Programmer28 |
| Programmer29 |
| Test Engineer7 |
| Test Engineer8 |
| Test Engineer44 |
| Test Engineer45 |
| Test Engineer46 |
| Test Engineer47 |
| Test Engineer48 |
| Test Engineer49 |
| Document Engineer7 |
| Document Engineer8 |
| Document Engineer13 |
| Document Engineer14 |
| Document Engineer43 |
| Document Engineer44 |
| Document Engineer45 |
| Document Engineer81 |
| Document Engineer82 |
| Document Engineer84 |
| Document Engineer85 |
| Document Engineer91 |
| Document Engineer379 |
| Document Engineer380 |
| Document Engineer381 |
| Document Engineer382 |
| Project Manager4 |
| Project Manager5 |
| Project Manager7 |
| Requirement engineer28 |
| Requirement engineer29 |
| Requirement engineer32 |
| System engineer30 |
| System engineer31 |
| System engineer32 |
| System engineer35 |
| System engineer379 |
| System engineer380 |
| System engineer381 |
| System engineer382 |
| Programmer58 |
| Programmer59 |
| Programmer65 |
| Programmer66 |
| Programmer379 |
| Programmer380 |
| Programmer381 |
| Test Engineer71 |
| Test Engineer72 |
| Test Engineer73 |
| Test Engineer74 |
| Test Engineer379 |
| Test Engineer380 |
| Test Engineer382 |
| Test Engineer384 |
| Test Engineer385 |
| Test Engineer386 |
| Test Engineer381 |

## Schedule

| ID | WBS | Task | Duration | Start | Finish | Predecessors | Total slack | Free slack | Constraint | Amount of Work | Productivity |
| --- | --- | --- | --- | --- | --- | --- | --- | --- | --- | --- | --- |
| 1 | 1 | **Project Assignment 3** | 382.59d | 2021-03-22 | 2022-09-07 |  | 0d |  |  |  |  |
| 2 | 1.1 | **Project Plan** | 12.77d | 2021-03-22 | 2021-04-07 |  | 0d |  |  |  |  |
| 3 | 1.1.1 | Write Plan | 4.91d | 2021-03-22 | 2021-03-26 |  | 0d |  | start no earlier than 2021-03-22 | 157 pages | 4 pages/Hour |
| 4 | 1.1.2 | **Review Plan** | 6.39d | 2021-03-26 | 2021-04-06 | 3 | 0d |  |  |  |  |
| 5 | 1.1.2.1 | Preparation for review | 3.93d | 2021-03-26 | 2021-04-01 | 3 | 0d |  |  | 157 pages | 5 pages/Hour |
| 6 | 1.1.2.2 | Review meeting | 2.46d | 2021-04-01 | 2021-04-06 | 5 | 0d |  |  | 157 pages | 8 pages/Hour |
| 7 | 1.1.3 | Rework | 1.47d | 2021-04-06 | 2021-04-07 | 6 | 0d |  |  | 82 defects | 7 defects/Hour |
| 8 | 1.2 | **Documented Software Development Process Updates** | 10.53d | 2021-04-07 | 2021-04-22 | 7 | 0d |  |  |  |  |
| 9 | 1.2.1 | Process changes | 6d | 2021-04-07 | 2021-04-15 | 7 | 0d |  |  | 96 changes | 2 changes/Hour |
| 10 | 1.2.2 | **Review changes** | 3.6d | 2021-04-15 | 2021-04-21 | 9 | 0d |  |  |  |  |
| 11 | 1.2.2.1 | Preparation for review | 2.4d | 2021-04-15 | 2021-04-20 | 9 | 0d |  |  | 96 changes | 5 changes/Hour |
| 12 | 1.2.2.2 | Review Meeting | 1.2d | 2021-04-20 | 2021-04-21 | 11 | 0d |  |  | 96 changes | 10 changes/Hour |
| 13 | 1.2.3 | Rework | 0.93d | 2021-04-21 | 2021-04-22 | 12 | 0d |  |  | 37 defects | 5 defects/Hour |
| 14 | 1.3 | **Requirement** | 83.54d | 2021-04-22 | 2021-08-17 | 13 | 0d |  |  |  |  |
| 15 | 1.3.1 | Write requirements | 5.57d | 2021-04-22 | 2021-04-29 | 13 | 0d |  |  | 178 requirements | 4 req/Hour |
| 16 | 1.3.2 | Write Use case Model | 67d | 2021-04-29 | 2021-08-02 | 15 | 0d |  |  | 134 use cases | 1 usecase/4 Hours |
| 17 | 1.3.3 | **Review requirements** | 7.64d | 2021-08-02 | 2021-08-12 | 16 | 0d |  |  |  |  |
| 18 | 1.3.3.1 | Preparation for review | 4.84d | 2021-08-02 | 2021-08-09 | 16 | 0d |  |  | 178 requirements | 15 req/Hour |
| 19 | 1.3.3.2 | Review Meeting | 2.8d | 2021-08-09 | 2021-08-12 | 18 | 0d |  |  | 178 requirements | 20 req/Hour |
| 20 | 1.3.4 | Rework | 3.33d | 2021-08-12 | 2021-08-17 | 19 | 0d |  |  | 133 defects | 5 defects/Hours |
| 21 | 1.4 | **Build the development and testing lab environment** | 27.9d | 2021-04-07 | 2021-05-17 | 7 | 76.41d |  |  |  |  |
| 22 | 1.4.1 | **Hardware Environemnt** | 17.4d | 2021-04-07 | 2021-05-03 | 7 | 76.41d |  |  |  |  |
| 23 | 1.4.1.1 | Servers | 12d | 2021-04-07 | 2021-04-23 | 7 | 421.47d | 0d |  | 12 | 1 server/day |
| 24 | 1.4.1.2 | Clients | 5.4d | 2021-04-23 | 2021-05-03 | 23 | 421.47d | 0d |  | 27 | 5 clients/day |

| ID | WBS | Task | Duration | Start | Finish | Predecessors | Total slack | Free slack | Productivity | Amount of Work |
| --- | --- | --- | --- | --- | --- | --- | --- | --- | --- | --- |
| 25 | 1.4.2 | **Software Development Tools** | 1d | 2021-05-03 | 2021-05-04 | 24 | 76.41d |  |  |  |
| 26 | 1.4.2.1 | Build/compile tools | 1d | 2021-05-03 | 2021-05-04 | 24 | 421.47d | 0d | 1 tool/Hour |  |
| 27 | 1.4.3 | **Software Testing Tools** | 9.5d | 2021-05-04 | 2021-05-17 | 26 | 76.41d |  |  |  |
| 28 | 1.4.3.1 | Test cases execution tools | 3.5d | 2021-05-04 | 2021-05-07 | 26 | 421.47d | 0d | 2 tool/day |  |
| 29 | 1.4.3.2 | simulation tools | 6d | 2021-05-07 | 2021-05-17 | 28 | 421.47d |  | 2 tool/day | 12 |
| 30 | 1.5 | **Analysis** | 10.24d | 2021-08-17 | 2021-09-01 | 20 | 0d |  |  |  |
| 31 | 1.5.1 | Write Analysis Document | 3.4d | 2021-08-17 | 2021-08-23 | 20 | 0d |  | 5 pages/Hour | 136 pages |
| 32 | 1.5.2 | **Review Analysis Document** | 5.1d | 2021-08-23 | 2021-08-30 | 31 | 0d |  |  |  |
| 33 | 1.5.2.1 | Preparation for Analysis Document | 3.4d | 2021-08-23 | 2021-08-26 | 31 | 0d |  | 5 pages/Hour | 136 pages |
| 34 | 1.5.2.2 | Review Meeting | 1.7d | 2021-08-26 | 2021-08-30 | 33 | 0d |  | 10 pages/Hour | 136 pages |
| 35 | 1.5.3 | Rework | 1.74d | 2021-08-30 | 2021-09-01 | 34 | 0d |  | 7 defects/Hour | 97 defects |
| 36 | 1.6 | **Design** | 28.18d | 2021-09-01 | 2021-10-11 | 35, 29 | 0d |  |  |  |
| 37 | 1.6.1 | Write DD | 6.8d | 2021-09-01 | 2021-09-09 | 35, 29 | 0d |  | 3 pages/ Hour | 163 pages |
| 38 | 1.6.2 | **Review DD** | 6.35d | 2021-09-09 | 2021-09-20 | 37 | 0d |  |  |  |
| 39 | 1.6.2.1 | Preparation for DD | 4.08d | 2021-09-09 | 2021-09-15 | 37 | 0d |  | 5 pages/Hour | 163 pages |
| 40 | 1.6.2.2 | Review Meeting | 2.27d | 2021-09-15 | 2021-09-20 | 39 | 0d |  | 9 pages/Hour | 163 pages |
| 41 | 1.6.3 | Rework | 4.85d | 2021-09-20 | 2021-09-27 | 40 | 0d |  | 5 defects/Hour | 194 defects |
| 42 | 1.6.4 | Write Data model | 5.63d | 2021-09-27 | 2021-10-04 | 41 | 0d |  | 1 pages/Hour | 45 pages |
| 43 | 1.6.5 | **Review DM** | 2.12d | 2021-10-04 | 2021-10-06 | 42 | 0d |  |  |  |
| 44 | 1.6.5.1 | Preparation for DM | 1.41d | 2021-10-04 | 2021-10-06 | 42 | 0d |  | 4 pages/Hour | 45 pages |
| 45 | 1.6.5.2 | Review Meeting | 0.71d | 2021-10-06 | 2021-10-06 | 44 | 0d |  | 8 pages/Hour | 45 pages |
| 46 | 1.6.6 | Rework | 2.43d | 2021-10-06 | 2021-10-11 | 45 | 0d |  | 5 defects/Hour | 97 defects |
| 47 | 1.7 | **Coding** | 170.73d | 2021-10-11 | 2022-06-06 | 46 | 0d |  |  |  |
| 48 | 1.7.1 | Write code | 99.68d | 2021-10-11 | 2022-02-25 | 46 | 0d |  | 5 SLOC/Hour | 3987 SLOC |

| ID | WBS | Task | Duration | Start | Finish | Predecessors | Total slack | Amount of Work | Productivity |
| --- | --- | --- | --- | --- | --- | --- | --- | --- | --- |
| 49 | 1.7.2 | **Unit testing** | 59.12d | 2022-02-25 | 2022-05-20 | 48 | 0d |  |  |
| 50 | 1.7.2.1 | Prepare/Execute test cases | 25.69d | 2022-02-25 | 2022-04-04 | 48 | 0d | 411 test cases | 2 test cases/Hour |
| 51 | 1.7.2.2 | Fix found defects | 21.43d | 2022-04-04 | 2022-05-04 | 50 | 0d | 300 defects | 14 defects/Day |
| 52 | 1.7.2.3 | Test fixed defects | 12d | 2022-05-04 | 2022-05-20 | 51 | 0d | 300 defects | 25 defects/Day |
| 53 | 1.7.3 | **Code inspection** | 11.93d | 2022-05-20 | 2022-06-06 | 52 | 0d |  |  |
| 54 | 1.7.3.1 | Preparation for code inspection | 3.33d | 2022-05-20 | 2022-05-25 | 52 | 0d | 3987 SLOC | 150 SLOC/Hour |
| 55 | 1.7.3.2 | code inspection meeting | 2.5d | 2022-05-25 | 2022-05-27 | 54 | 0d | 3987 SLOC | 200 SLOC/Hour |
| 56 | 1.7.3.3 | Rework | 6.1d | 2022-05-27 | 2022-06-06 | 55 | 0d | 244 defects | 5 defects/Hour |
| 57 | 1.8 | **Testing** | 55.08d | 2022-06-06 | 2022-08-23 | 20, 56 | 0d |  |  |
| 58 | 1.8.1 | Write test plan | 17.3d | 2022-06-06 | 2022-06-30 | 20 | 0d | 173 pages | 10 pages/Day |
| 59 | 1.8.2 | **Review TP** | 10.03d | 2022-06-30 | 2022-07-14 | 58 | 0d |  |  |
| 60 | 1.8.2.1 | Preparation for TP | 5.41d | 2022-06-30 | 2022-07-07 | 58 | 0d | 173 pages | 4 pages/Hour |
| 61 | 1.8.2.2 | Review TP meeting | 2.17d | 2022-07-07 | 2022-07-11 | 60 | 0d | 173 pages | 10 pages/Hour |
| 62 | 1.8.2.3 | Rework | 2.45d | 2022-07-11 | 2022-07-14 | 61 | 0d | 98 defects | 5 defects/Hour |
| 63 | 1.8.3 | Execute TP (test cases) | 15.75d | 2022-07-14 | 2022-08-05 | 56, 62 | 0d | 189 test cases | 12 test cases/day |
| 64 | 1.8.4 | Fix found defects | 7.2d | 2022-08-05 | 2022-08-16 | 63 | 0d | 72 defects | 10 defects/day |
| 65 | 1.8.5 | Test fixed defects | 4.8d | 2022-08-16 | 2022-08-23 | 64 | 0d | 72 defects | 15 defetcs/day |
| 66 | 1.9 | **Documentation** | 11.52d | 2022-08-23 | 2022-09-07 | 20, 65 | 0d |  |  |
| 67 | 1.9.1 | User documentation | 5d | 2022-08-23 | 2022-08-30 | 20, 65 | 0d | 160 pages | 4 pages/Hour |
| 68 | 1.9.2 | **Review UD** | 6.52d | 2022-08-30 | 2022-09-07 | 67 | 0d |  |  |
| 69 | 1.9.2.1 | Preparation for UD Review | 2.86d | 2022-08-30 | 2022-09-01 | 67 | 0d | 160 pages | 7 pages/Hour |
| 70 | 1.9.2.2 | Review UD Meeting | 2.23d | 2022-09-01 | 2022-09-06 | 69 | 0d | 160 pages | 9 pages/Hour |
| 71 | 1.9.2.3 | Rework | 1.43d | 2022-09-06 | 2022-09-07 | 70 | 0d | 194 defects | 17 defects/Hour |
